# Software Development Plan

How a schedule from MS Project changed from version to version. A marks actual dates.

## Version 1 (saved 2014-08-04)

Note of the change: Merge branch 'documentation' of https://github.com/xShay/SE306-ROS into documentation

| ID | WBS | Task | Duration | Start | Finish | Predecessors | Total float |
| --- | --- | --- | --- | --- | --- | --- | --- |
| 1 |  | Start | 0d | 2014-07-24 | 2014-07-24 |  | 1d |
| 2 | 2 | **Organisational Tasks** | 36d | 2014-07-24 | 2014-08-28 |  | 0d |
| 3 | 2.1 | **Meeting** | 36d | 2014-07-24 | 2014-08-28 |  | 0d |
| 4 |  | Meeting 1 | 1d | 2014-07-24 | 2014-07-24 |  | 35d |
| 5 |  | Meeting 2 | 1d | 2014-07-28 | 2014-07-28 |  |  |
| 6 |  | Meeting 3 | 1d | 2014-07-31 | 2014-07-31 |  |  |
| 7 |  | Meeting 4 | 1d | 2014-08-04 | 2014-08-04 |  |  |
| 8 |  | Meeting 5 | 1d | 2014-08-07 | 2014-08-07 |  |  |
| 9 |  | Meeting 6 | 1d | 2014-08-11 | 2014-08-11 |  |  |
| 10 |  | Meeting 7 | 1d | 2014-08-14 | 2014-08-14 |  |  |
| 11 |  | Meeting 8 | 1d | 2014-08-18 | 2014-08-18 |  |  |
| 12 |  | Meeting 9 | 1d | 2014-08-21 | 2014-08-21 |  |  |
| 13 |  | Meeting 10 | 1d | 2014-08-25 | 2014-08-25 |  |  |
| 14 |  | Meeting 11 | 1d | 2014-08-28 | 2014-08-28 |  |  |
| 15 | 2.2 | **Presentation** | 29d | 2014-07-31 | 2014-08-28 |  | 0d |
| 16 |  | Presentation 1 | 1d | 2014-07-31 | 2014-07-31 |  |  |
| 17 |  | Presentation 2 | 1d | 2014-08-07 | 2014-08-07 |  |  |
| 18 |  | Presentation 3 | 1d | 2014-08-14 | 2014-08-14 |  |  |
| 19 |  | Presentation 4 | 1d | 2014-08-21 | 2014-08-21 |  |  |
| 20 |  | Presentation 5 | 1d | 2014-08-28 | 2014-08-28 |  |  |
| 21 | 3 | **Create Wiki** | 2d | 2014-07-24 | 2014-07-25 |  | 1d |
| 22 |  | Initialize Wiki for Project | 1d | 2014-07-24 | 2014-07-24 | 1 | 1d |
| 23 |  | Write Git Workflow Article | 1d | 2014-07-25 | 2014-07-25 | 22 | 1d |
| 24 |  | Write C++ Style Guide | 1d | 2014-07-25 | 2014-07-25 | 22 | 1d |
| 25 |  | Write Python Style Guide | 1d | 2014-07-25 | 2014-07-25 | 22 | 1d |
| 26 | 4 | **General Training** | 1d | 2014-07-25 | 2014-07-25 |  | 1d |
| 27 |  | Basic ROS Tutorials | 1d | 2014-07-25 | 2014-07-25 | 22 | 1d |
| 28 | 5 | **Specialised Training** | 3d | 2014-07-26 | 2014-07-28 |  | 1d |
| 29 |  | Run ROS Pathfinding Tutorial | 3d | 2014-07-26 | 2014-07-28 | 23, 24, 25, 27 | 1d |
| 30 |  | Run ROS Services Tutorial | 3d | 2014-07-26 | 2014-07-28 | 23, 24, 25, 27 | 1d |
| 31 |  | Run ROS Messages Tutorial | 3d | 2014-07-26 | 2014-07-28 | 23, 24, 25, 27 | 1d |
| 32 |  | Run ROS Stage Tutorial | 3d | 2014-07-26 | 2014-07-28 | 23, 24, 25, 27 | 1d |
| 33 |  | Run ROS Build Tutorial | 3d | 2014-07-26 | 2014-07-28 | 23, 24, 25, 27 | 1d |
| 34 |  | Run ROS Roslaunch Tutorial | 3d | 2014-07-26 | 2014-07-28 | 23, 24, 25, 27 | 1d |
| 35 | 6 | **Project Implementation Alpha Release** | 16d | 2014-07-29 | 2014-08-13 |  | 1d |
| 36 | 6.1 | **Design System Architecture** | 5d | 2014-07-29 | 2014-08-02 |  | 1d |
| 37 |  | Design Robot Class Hierarchy | 1d | 2014-07-29 | 2014-07-29 | 29, 34, 30, 31, 32, 33 | 1d |
| 38 |  | Design World | 1d | 2014-07-29 | 2014-07-29 | 29, 30, 31, 32, 33, 34 | 7d |
| 39 |  | Design Robot Appearance | 1d | 2014-07-29 | 2014-07-29 | 29, 34, 30, 31, 32, 33 | 5d |
| 40 | 6.1.4 | **Design Robot Behaviours** | 4d | 2014-07-30 | 2014-08-02 |  | 1d |
| 41 |  | Design General Robot Behaviour | 3d | 2014-07-30 | 2014-08-01 | 37, 29, 34 | 1d |
| 42 |  | Design Assistant Robot Behaviour | 1d | 2014-08-02 | 2014-08-02 | 41, 29, 34 | 1d |
| 43 |  | Design Visitor Robot Behaviour | 1d | 2014-08-02 | 2014-08-02 | 41, 29, 34 | 1d |
| 44 |  | Design Resident Robot Behaviour | 1d | 2014-08-02 | 2014-08-02 | 41, 29, 34 | 1d |
| 45 | 6.2 | **Robot Implementation, Testing, Documentation** | 5d | 2014-08-02 | 2014-08-06 |  | 1d |
| 46 |  | Implement ‘General’ Robot | 4d | 2014-08-02 | 2014-08-05 | 41, 39 | 2d |
| 47 |  | Implement Resident Robot | 4d | 2014-08-03 | 2014-08-06 | 44, 39 | 1d |
| 48 |  | Implement Visitor Robot | 4d | 2014-08-03 | 2014-08-06 | 43, 39 | 1d |
| 49 |  | Implement Assistant Robot | 4d | 2014-08-03 | 2014-08-06 | 42, 39 | 1d |
| 50 | 6.3 | **World Creation** | 2d | 2014-07-30 | 2014-07-31 |  | 7d |
| 51 |  | Create PGM File | 2d | 2014-07-30 | 2014-07-31 | 32, 37, 38, 39 | 7d |
| 52 |  | Create World Objects | 2d | 2014-07-30 | 2014-07-31 | 32, 37, 38, 39 | 7d |
| 53 | 6.4 | **Communications** | 2d | 2014-07-30 | 2014-07-31 |  | 7d |
| 54 |  | Create Basic ROS Topics | 2d | 2014-07-30 | 2014-07-31 | 30, 31, 37, 38, 39 | 7d |
| 55 |  | Create Basic ROS Services | 2d | 2014-07-30 | 2014-07-31 | 30, 31, 37, 38, 39 | 7d |
| 56 |  | Create Basic ROS Messages | 2d | 2014-07-30 | 2014-07-31 | 31, 30, 37, 38, 39 | 7d |
| 57 | 6.5 | **Integration Between World And Robots** | 3d | 2014-08-07 | 2014-08-09 |  | 1d |
| 58 |  | Integration Between World And Robots | 3d | 2014-08-07 | 2014-08-09 | 46, 47, 48, 49, 51, 52, 54, 55, 56 | 1d |
| 59 | 6.6 | **Build Tasks** | 4d | 2014-07-30 | 2014-08-02 |  | 8d |
| 60 |  | Create Build Scripts | 4d | 2014-07-30 | 2014-08-02 | 33, 37, 38, 39 | 8d |
| 61 |  | Test Build Scripts | 2d | 2014-07-30 | 2014-07-31 | 33, 60SS | 8d |
| 62 |  | Run/Launch Build Scripts | 2d | 2014-08-01 | 2014-08-02 | 61, 33 | 8d |
| 63 |  | Create Convenience Scripts | 4d | 2014-07-30 | 2014-08-02 | 33, 37, 38, 39 | 8d |
| 64 | 6.7 | **Acceptance Testing** | 4d | 2014-08-10 | 2014-08-13 |  | 1d |
| 65 |  | Acceptance Testing Of Alpha Release | 4d | 2014-08-10 | 2014-08-13 | 58, 62, 63 | 1d |
| 66 |  | Alpha Release | 0d | 2014-08-15 | 2014-08-15 | 65 |  |
| 67 | 8 | **Project Implementation Final Release** | 14d | 2014-08-15 | 2014-08-28 |  | 0d |
| 68 | 8.1 | **Design System Architecture** | 2d | 2014-08-15 | 2014-08-16 |  | 0d |
| 69 |  | Design Robot Class Hierarchy | 2d | 2014-08-15 | 2014-08-16 | 66 | 0d |
| 70 |  | Design World | 2d | 2014-08-15 | 2014-08-16 | 66 | 3d |

| ID | WBS | Task | Duration | Start | Finish | Predecessors | Total float |
| --- | --- | --- | --- | --- | --- | --- | --- |
| 71 |  | Design Innovative Feature | 2d | 2014-08-15 | 2014-08-16 | 66 | 0d |
| 72 | 8.1.4 | **Design Robot Behaviours** | 2d | 2014-08-15 | 2014-08-16 |  | 0d |
| 73 |  | Design Resident Robot Behaviour | 2d | 2014-08-15 | 2014-08-16 | 66 | 0d |
| 74 |  | Design Friend Robot Behaviour | 2d | 2014-08-15 | 2014-08-16 | 66 | 0d |
| 75 |  | Design Relative Robot Behaviour | 2d | 2014-08-15 | 2014-08-16 | 66 | 0d |
| 76 |  | Design Doctor Robot Behaviour | 2d | 2014-08-15 | 2014-08-16 | 66 | 0d |
| 77 |  | Design Nurse Robot Behaviour | 2d | 2014-08-15 | 2014-08-16 | 66 | 0d |
| 78 |  | Design Medication Assistant Robot Behaviour | 2d | 2014-08-15 | 2014-08-16 | 66 | 0d |
| 79 |  | Design Cook Assistant Robot Behaviour | 2d | 2014-08-15 | 2014-08-16 | 66 | 0d |
| 80 |  | Design Companion Assistant Robot Behaviour | 2d | 2014-08-15 | 2014-08-16 | 66 | 0d |
| 81 |  | Design Entertainment Assistant Robot Behaviour | 2d | 2014-08-15 | 2014-08-16 | 66 | 0d |
| 82 | 8.2 | **Robot Implementation** | 7d | 2014-08-17 | 2014-08-23 |  | 0d |
| 83 |  | Implement Resident Robot | 7d | 2014-08-17 | 2014-08-23 | 73, 69 | 0d |
| 84 |  | Implement Friend Robot | 7d | 2014-08-17 | 2014-08-23 | 74, 69 | 0d |
| 85 |  | Implement Relative Robot | 7d | 2014-08-17 | 2014-08-23 | 75, 69 | 0d |
| 86 |  | Implement Doctor Robot | 7d | 2014-08-17 | 2014-08-23 | 76, 69 | 0d |
| 87 |  | Implement Nurse Robot | 7d | 2014-08-17 | 2014-08-23 | 77, 69 | 0d |
| 88 |  | Implement Medication Assistant Robot | 7d | 2014-08-17 | 2014-08-23 | 78, 69 | 0d |
| 89 |  | Implement Cook Assistant Robot | 7d | 2014-08-17 | 2014-08-23 | 79, 69 | 0d |
| 90 |  | Implement Entertainment Assistant Robot | 7d | 2014-08-17 | 2014-08-23 | 81, 69 | 0d |
| 91 |  | Implement Innovative Feature | 7d | 2014-08-17 | 2014-08-23 | 71 | 0d |
| 92 |  | Implement Companion Assistant Robot | 7d | 2014-08-17 | 2014-08-23 | 80, 69 | 0d |
| 93 | 8.3 | **World Creation** | 4d | 2014-08-17 | 2014-08-20 |  | 3d |
| 94 |  | Add House Objects | 2d | 2014-08-17 | 2014-08-18 | 70 | 3d |
| 95 |  | Implement Stage Node | 2d | 2014-08-17 | 2014-08-18 | 70 | 5d |
| 96 |  | Add Attributes For House Objects | 2d | 2014-08-19 | 2014-08-20 | 94 | 3d |
| 97 | 8.4 | **Communications** | 4d | 2014-08-17 | 2014-08-20 |  | 3d |
| 98 |  | Create ROS Topics | 4d | 2014-08-17 | 2014-08-20 | 73, 74, 75, 76, 77, 78, 79, 80, 81 | 3d |
| 99 |  | Create ROS Services | 4d | 2014-08-17 | 2014-08-20 | 73, 74, 75, 76, 77, 78, 79, 80, 81 | 3d |
| 100 |  | Create ROS Messages | 4d | 2014-08-17 | 2014-08-20 | 73, 74, 75, 76, 77, 78, 79, 80, 81 | 3d |
| 101 | 8.5 | **Integration Between World And Robots** | 2d | 2014-08-24 | 2014-08-25 |  | 0d |
| 102 |  | Integration Between World And Robots | 2d | 2014-08-24 | 2014-08-25 | 83, 84, 85, 86, 87, 88, 89, 90, 92, 99, 100, 94, 95, 96, 98, 91 | 0d |
| 103 | 8.6 | **Build Tasks** | 3d | 2014-08-17 | 2014-08-19 |  | 6d |
| 104 |  | Create Build Scripts | 2d | 2014-08-17 | 2014-08-18 | 83SS, 84SS, 85SS, 86SS, 87SS, 88SS, 89SS, 90SS, 92SS, 91SS | 6d |
| 105 |  | Test Build Scripts | 2d | 2014-08-17 | 2014-08-18 | 104SS | 6d |
| 106 |  | Run/Launch Build Scripts | 1d | 2014-08-19 | 2014-08-19 | 105 | 6d |
| 107 |  | Create Convenience Scripts | 2d | 2014-08-17 | 2014-08-18 | 104SS | 7d |
| 108 | 8.7 | **Acceptance Testing** | 3d | 2014-08-26 | 2014-08-28 |  | 0d |
| 109 |  | Acceptance Testing Final Version | 3d | 2014-08-26 | 2014-08-28 | 102, 106, 107 | 0d |
| 110 |  | Final Release | 0d | 2014-08-29 | 2014-08-29 | 109 |  |
| 111 |  | End | 0d | 2014-08-29 | 2014-08-29 | 110 | 0d |

## Version 2 (saved 2014-08-12)

Note of the change: Updated resource allocation for third presentation week

Last finish stays 2014-08-29.

Changed:

| ID | Task | Other |
| --- | --- | --- |
| 18 | Presentation 3 | resources Michael Shafer; Matthew Chiam; Nicholas Weatherburn → Michael Shafer; Tommy Ngo; Bert Huang |

## Version 3 (saved 2014-08-12)

Note of the change: Added ongoing documentation writing tasks into project plan

Last finish 2014-08-29 → 2014-08-28 (-1d).

Added:

| ID | Task | Duration | Start | Finish | Predecessors |
| --- | --- | --- | --- | --- | --- |
| 66 | Write Documentation | 16d | 2014-07-29 | 2014-08-13 | 37SS, 38SS, 39SS |
| 111 | Write Documentation | 14d | 2014-08-14 | 2014-08-27 | 70SS, 71SS, 72SS, 74SS, 75SS, 76SS, 77SS, 78SS, 79SS, 80SS, 81SS, 82SS |

Changed:

| ID | Task | Start | Finish | Total float | Predecessors |
| --- | --- | --- | --- | --- | --- |
| 67 | Alpha Release | 2014-08-15 → 2014-08-14 (-1d) | 2014-08-15 → 2014-08-14 (-1d) |  | 65 → 65, 66 |
| 68 | **Project Implementation Final Release** | 2014-08-15 → 2014-08-14 (-1d) | 2014-08-28 → 2014-08-27 (-1d) | 0d → 1d |  |
| 69 | **Design System Architecture** | 2014-08-15 → 2014-08-14 (-1d) | 2014-08-16 → 2014-08-15 (-1d) | 0d → 1d |  |
| 70 | Design Robot Class Hierarchy | 2014-08-15 → 2014-08-14 (-1d) | 2014-08-16 → 2014-08-15 (-1d) | 0d → 1d |  |
| 71 | Design World | 2014-08-15 → 2014-08-14 (-1d) | 2014-08-16 → 2014-08-15 (-1d) | 3d → 1d |  |
| 72 | Design Innovative Feature | 2014-08-15 → 2014-08-14 (-1d) | 2014-08-16 → 2014-08-15 (-1d) | 0d → 1d |  |
| 73 | **Design Robot Behaviours** | 2014-08-15 → 2014-08-14 (-1d) | 2014-08-16 → 2014-08-15 (-1d) | 0d → 1d |  |
| 74 | Design Resident Robot Behaviour | 2014-08-15 → 2014-08-14 (-1d) | 2014-08-16 → 2014-08-15 (-1d) | 0d → 1d |  |
| 75 | Design Friend Robot Behaviour | 2014-08-15 → 2014-08-14 (-1d) | 2014-08-16 → 2014-08-15 (-1d) | 0d → 1d |  |
| 76 | Design Relative Robot Behaviour | 2014-08-15 → 2014-08-14 (-1d) | 2014-08-16 → 2014-08-15 (-1d) | 0d → 1d |  |
| 77 | Design Doctor Robot Behaviour | 2014-08-15 → 2014-08-14 (-1d) | 2014-08-16 → 2014-08-15 (-1d) | 0d → 1d |  |
| 78 | Design Nurse Robot Behaviour | 2014-08-15 → 2014-08-14 (-1d) | 2014-08-16 → 2014-08-15 (-1d) | 0d → 1d |  |
| 79 | Design Medication Assistant Robot Behaviour | 2014-08-15 → 2014-08-14 (-1d) | 2014-08-16 → 2014-08-15 (-1d) | 0d → 1d |  |
| 80 | Design Cook Assistant Robot Behaviour | 2014-08-15 → 2014-08-14 (-1d) | 2014-08-16 → 2014-08-15 (-1d) | 0d → 1d |  |
| 81 | Design Companion Assistant Robot Behaviour | 2014-08-15 → 2014-08-14 (-1d) | 2014-08-16 → 2014-08-15 (-1d) | 0d → 1d |  |
| 82 | Design Entertainment Assistant Robot Behaviour | 2014-08-15 → 2014-08-14 (-1d) | 2014-08-16 → 2014-08-15 (-1d) | 0d → 1d |  |
| 83 | **Robot Implementation** | 2014-08-17 → 2014-08-16 (-1d) | 2014-08-23 → 2014-08-22 (-1d) | 0d → 1d |  |
| 84 | Implement Resident Robot | 2014-08-17 → 2014-08-16 (-1d) | 2014-08-23 → 2014-08-22 (-1d) | 0d → 1d |  |
| 85 | Implement Friend Robot | 2014-08-17 → 2014-08-16 (-1d) | 2014-08-23 → 2014-08-22 (-1d) | 0d → 1d |  |
| 86 | Implement Relative Robot | 2014-08-17 → 2014-08-16 (-1d) | 2014-08-23 → 2014-08-22 (-1d) | 0d → 1d |  |
| 87 | Implement Doctor Robot | 2014-08-17 → 2014-08-16 (-1d) | 2014-08-23 → 2014-08-22 (-1d) | 0d → 1d |  |
| 88 | Implement Nurse Robot | 2014-08-17 → 2014-08-16 (-1d) | 2014-08-23 → 2014-08-22 (-1d) | 0d → 1d |  |
| 89 | Implement Medication Assistant Robot | 2014-08-17 → 2014-08-16 (-1d) | 2014-08-23 → 2014-08-22 (-1d) | 0d → 1d |  |
| 90 | Implement Cook Assistant Robot | 2014-08-17 → 2014-08-16 (-1d) | 2014-08-23 → 2014-08-22 (-1d) | 0d → 1d |  |
| 91 | Implement Entertainment Assistant Robot | 2014-08-17 → 2014-08-16 (-1d) | 2014-08-23 → 2014-08-22 (-1d) | 0d → 1d |  |
| 92 | Implement Innovative Feature | 2014-08-17 → 2014-08-16 (-1d) | 2014-08-23 → 2014-08-22 (-1d) | 0d → 1d |  |
| 93 | Implement Companion Assistant Robot | 2014-08-17 → 2014-08-16 (-1d) | 2014-08-23 → 2014-08-22 (-1d) | 0d → 1d |  |
| 94 | **World Creation** | 2014-08-17 → 2014-08-16 (-1d) | 2014-08-20 → 2014-08-19 (-1d) | 3d → 4d |  |
| 95 | Add House Objects | 2014-08-17 → 2014-08-16 (-1d) | 2014-08-18 → 2014-08-17 (-1d) | 3d → 4d |  |
| 96 | Implement Stage Node | 2014-08-17 → 2014-08-16 (-1d) | 2014-08-18 → 2014-08-17 (-1d) | 5d → 6d |  |
| 97 | Add Attributes For House Objects | 2014-08-19 → 2014-08-18 (-1d) | 2014-08-20 → 2014-08-19 (-1d) | 3d → 4d |  |
| 98 | **Communications** | 2014-08-17 → 2014-08-16 (-1d) | 2014-08-20 → 2014-08-19 (-1d) | 3d → 4d |  |
| 99 | Create ROS Topics | 2014-08-17 → 2014-08-16 (-1d) | 2014-08-20 → 2014-08-19 (-1d) | 3d → 4d |  |
| 100 | Create ROS Services | 2014-08-17 → 2014-08-16 (-1d) | 2014-08-20 → 2014-08-19 (-1d) | 3d → 4d |  |
| 101 | Create ROS Messages | 2014-08-17 → 2014-08-16 (-1d) | 2014-08-20 → 2014-08-19 (-1d) | 3d → 4d |  |
| 102 | **Integration Between World And Robots** | 2014-08-24 → 2014-08-23 (-1d) | 2014-08-25 → 2014-08-24 (-1d) | 0d → 1d |  |
| 103 | Integration Between World And Robots | 2014-08-24 → 2014-08-23 (-1d) | 2014-08-25 → 2014-08-24 (-1d) | 0d → 1d |  |
| 104 | **Build Tasks** | 2014-08-17 → 2014-08-16 (-1d) | 2014-08-19 → 2014-08-18 (-1d) | 6d → 7d |  |
| 105 | Create Build Scripts | 2014-08-17 → 2014-08-16 (-1d) | 2014-08-18 → 2014-08-17 (-1d) | 6d → 7d |  |
| 106 | Test Build Scripts | 2014-08-17 → 2014-08-16 (-1d) | 2014-08-18 → 2014-08-17 (-1d) | 6d → 7d |  |
| 107 | Run/Launch Build Scripts | 2014-08-19 → 2014-08-18 (-1d) | 2014-08-19 → 2014-08-18 (-1d) | 6d → 7d |  |
| 108 | Create Convenience Scripts | 2014-08-17 → 2014-08-16 (-1d) | 2014-08-18 → 2014-08-17 (-1d) | 7d → 8d |  |
| 109 | **Acceptance Testing** | 2014-08-26 → 2014-08-25 (-1d) | 2014-08-28 → 2014-08-27 (-1d) | 0d → 1d |  |
| 110 | Acceptance Testing Final Version | 2014-08-26 → 2014-08-25 (-1d) | 2014-08-28 → 2014-08-27 (-1d) | 0d → 1d |  |
| 112 | Final Release | 2014-08-29 → 2014-08-28 (-1d) | 2014-08-29 → 2014-08-28 (-1d) |  | 110 → 110, 111 |
| 113 | End | 2014-08-29 → 2014-08-28 (-1d) | 2014-08-29 → 2014-08-28 (-1d) | 0d → 1d |  |

## Version 4 (saved 2014-08-21)

Note of the change: Removed presentation 5 task. Added Random Event and Scheduler design tasks. Updated resource assignment for various tasks.

Last finish stays 2014-08-28.

Added:

| ID | Task | Duration | Start | Finish | Predecessors | Resources |
| --- | --- | --- | --- | --- | --- | --- |
| 71 | Design Interactive GUI | 2d | 2014-08-14 | 2014-08-15 | 66 | Team |
| 72 | Design Event Scheduler Logic | 2d | 2014-08-14 | 2014-08-15 | 66 | Team |
| 94 | **Event Scheduler Implementation** | 7d | 2014-08-16 | 2014-08-22 |  |  |
| 95 | Implement Event Scheduler | 7d | 2014-08-16 | 2014-08-22 | 72 | Bert Huang |
| 96 | **Interactive GUI Implementation** | 7d | 2014-08-16 | 2014-08-22 |  |  |
| 97 | Implement Interactive GUI | 7d | 2014-08-16 | 2014-08-22 | 71 | Hugo Bateman |
| 98 | **Random Event Logic Implementation** | 7d | 2014-08-16 | 2014-08-22 |  |  |
| 99 | Implement Ill Random Event | 7d | 2014-08-16 | 2014-08-22 | 73 | Matthew Chiam |
| 100 | Implement Severly Ill Random Event | 7d | 2014-08-16 | 2014-08-22 | 73 | Matthew Chiam |

Removed: 20 Presentation 5

Changed:

| ID | Task | Finish | Duration | Predecessors | Other |
| --- | --- | --- | --- | --- | --- |
| 15 | **Presentation** | 2014-08-28 → 2014-08-21 (-7d) | 29d → 22d |  |  |
| 16 | Presentation 1 |  |  |  | resources Matthew Chiam; Akshay Kalyan; Nicholas Weatherburn; Hugo Bateman → Akshay Kalyan; Nicholas Weatherburn; Hugo Bateman |
| 17 | Presentation 2 |  |  |  | resources James Butler; Tommy Ngo; Bert Huang → James Butler; Tommy Ngo; Bert Huang; Matthew Chiam |
| 18 | Presentation 3 |  |  |  | resources Michael Shafer; Tommy Ngo; Bert Huang → Michael Shafer; Tommy Ngo; Bert Huang; Matthew Chiam |
| 19 | Presentation 4 |  |  |  | resources Akshay Kalyan; Hugo Bateman; James Butler → Akshay Kalyan; Hugo Bateman; James Butler; Nicholas Weatherburn |
| 65 | Write Documentation |  |  |  | resources none → Team |
| 73 | Design Random Event Logic |  |  |  | was named Design Innovative Feature |
| 90 | Implement Medication Assistant Robot |  |  |  | resources Hugo Bateman → Tommy Ngo |
| 93 | Implement Companion Assistant Robot |  |  |  | resources Matthew Chiam → Hugo Bateman |
| 101 | Implement Moral Support Random Event |  |  |  | was named Implement Innovative Feature; resources Tommy Ngo → Matthew Chiam |
| 103 | Add House Objects |  |  |  | resources Bert Huang → James Butler |
| 104 | Implement Stage Node |  |  |  | resources Bert Huang → James Butler |
| 105 | Add Attributes For House Objects |  |  |  | resources Bert Huang → James Butler |
| 108 | Create ROS Services |  |  |  | resources Matthew Chiam → Michael Shafer |
| 111 | Integration Between World And Robots |  |  | 85, 86, 87, 88, 89, 90, 91, 92, 93, 108, 109, 103, 104, 105, 107, 101 → 85, 86, 87, 88, 89, 90, 91, 92, 93, 108, 109, 103, 104, 105, 107, 101, 98, 100, 99, 96, 97, 94, 95 |  |
| 113 | Create Build Scripts |  |  | 85SS, 86SS, 87SS, 88SS, 89SS, 90SS, 91SS, 92SS, 93SS, 101SS → 85SS, 86SS, 87SS, 88SS, 89SS, 90SS, 91SS, 92SS, 93SS, 101SS, 98SS, 100SS, 99SS, 96SS, 97SS, 94SS, 95SS |  |
| 119 | Write Documentation |  |  | 69SS, 70SS, 73SS, 75SS, 76SS, 77SS, 78SS, 79SS, 80SS, 81SS, 82SS, 83SS → 69SS, 70SS, 73SS, 75SS, 76SS, 77SS, 78SS, 79SS, 80SS, 81SS, 82SS, 83SS, 71SS, 72SS | resources none → Team |
